# Construction schedule v1.0

Schedule from an IFC model, 2027-03-01 to 2028-02-16.
120-Room Hotel, Scheveningen

## Schedule

| ID | Activity | Type | Duration | Start | Finish | Predecessors | Planned start | Planned finish | Total float | Free float |
| --- | --- | --- | --- | --- | --- | --- | --- | --- | --- | --- |
| 1 | **1. Preparation** |  | 5d | 2027-03-01 | 2027-03-25 |  | 2027-03-01 | 2027-03-05 | 0d |  |
| 1.1 | Demolish existing building |  | 10d | 2027-03-01 | 2027-03-12 |  |  |  | 0d |  |
| 1.2 | Set up site |  | 5d | 2027-03-15 | 2027-03-19 | 1.1 | 2027-03-01 | 2027-03-05 | 213d | 0d |
| 1.3 | Foundation survey |  | 3d | 2027-03-22 | 2027-03-24 | 1.2 | 2027-03-01 | 2027-03-03 | 213d | 0d |
| 1.4 | Start of new build | milestone | 0d | 2027-03-25 | 2027-03-25 | 1.3 | 2027-03-01 | 2027-03-01 | 213d |  |
| 2 | **2. Foundations** |  | 5d | 2027-03-12 | 2027-05-24 |  | 2027-03-01 | 2027-03-05 | 0d |  |
| 2.1 | Sheet piling, boulevard |  | 10d | 2027-03-12 | 2027-03-25 | 1.1 SS+9d | 2027-03-01 | 2027-03-12 | 0d |  |
| 2.2 | Excavate basement |  | 8d | 2027-03-30 | 2027-04-08 | 2.1 | 2027-03-01 | 2027-03-10 | 177d | 0d |
| 2.3 | Foundation piles |  | 12d | 2027-04-09 | 2027-04-26 | 2.2 | 2027-03-01 | 2027-03-16 | 177d | 0d |
| 2.4 | Basement floor, wellness |  | 8d | 2027-04-28 | 2027-05-11 | 2.3 | 2027-03-01 | 2027-03-10 | 177d | 0d |
| 2.5 | Basement walls |  | 8d | 2027-05-12 | 2027-05-24 | 2.4 | 2027-03-01 | 2027-03-10 | 177d |  |
| 3 | **3. Structural works** |  | 5d | 2027-03-18 | 2027-06-29 |  | 2027-03-01 | 2027-03-05 | 0d |  |
| 3.1 | Ground floor lobby |  | 10d | 2027-03-18 | 2027-04-02 | 2.1 SS | 2027-03-01 | 2027-03-12 | 0d |  |
| 3.2 | Floor 1 rooms |  | 8d | 2027-04-05 | 2027-04-14 | 3.1 | 2027-03-01 | 2027-03-10 | 0d |  |
| 3.3 | Floor 2 rooms |  | 8d | 2027-04-15 | 2027-04-26 | 3.2 | 2027-03-01 | 2027-03-10 | 0d |  |
| 3.4 | Floor 3 rooms |  | 8d | 2027-04-28 | 2027-05-11 | 3.3 | 2027-03-01 | 2027-03-10 | 0d |  |
| 3.5 | Floor 4 rooms |  | 8d | 2027-05-12 | 2027-05-24 | 3.4 | 2027-03-01 | 2027-03-10 | 0d |  |
| 3.6 | Floor 5 rooms |  | 8d | 2027-05-25 | 2027-06-03 | 3.5 | 2027-03-01 | 2027-03-10 | 0d |  |
| 3.7 | Penthouse floor |  | 10d | 2027-06-04 | 2027-06-17 | 3.6 | 2027-03-01 | 2027-03-12 | 0d |  |
| 3.8 | Roof terrace structure |  | 8d | 2027-06-18 | 2027-06-29 | 3.7 | 2027-03-01 | 2027-03-10 | 0d |  |
| 3.9 | Topping out | milestone | 0d | 2027-06-29 | 2027-06-29 | 3.8 | 2027-03-01 | 2027-03-01 | 151d |  |
| 4 | **4. Facade** |  | 5d | 2027-06-10 | 2027-08-25 |  | 2027-03-01 | 2027-03-05 | 0d |  |
| 4.1 | Curtain wall, sea side |  | 12d | 2027-06-10 | 2027-06-25 | 3.8 FS-14d | 2027-03-01 | 2027-03-16 | 0d |  |
| 4.2 | Curtain wall, land side |  | 10d | 2027-06-28 | 2027-07-09 | 4.1 | 2027-03-01 | 2027-03-12 | 0d |  |
| 4.3 | Natural stone cladding |  | 10d | 2027-07-12 | 2027-07-23 | 4.2 | 2027-03-01 | 2027-03-12 | 0d |  |
| 4.4 | Window frames and glazing |  | 8d | 2027-08-16 | 2027-08-25 | 4.3, 3.8 FF+2d | 2027-03-01 | 2027-03-10 | 0d |  |
| 4.5 | Wind and weathertight | milestone | 0d | 2027-08-25 | 2027-08-25 | 4.4 | 2027-03-01 | 2027-03-01 | 125d |  |

| ID | Activity | Type | Duration | Start | Finish | Predecessors | Planned start | Planned finish | Total float | Free float |
| --- | --- | --- | --- | --- | --- | --- | --- | --- | --- | --- |
| 5 | **5. Building services** |  | 5d | 2027-08-26 | 2027-12-02 |  | 2027-03-01 | 2027-03-05 | 0d |  |
| 5.1 | Main electrical distribution |  | 8d | 2027-08-26 | 2027-09-06 | 4.4 | 2027-03-01 | 2027-03-10 | 0d |  |
| 5.2 | Risers, all services |  | 12d | 2027-09-07 | 2027-09-22 | 5.1 | 2027-03-01 | 2027-03-16 | 54d | 0d |
| 5.3 | VRF climate system |  | 10d | 2027-09-14 | 2027-09-27 | 5.2 SS+5d | 2027-03-01 | 2027-03-12 | 54d | 0d |
| 5.4 | Ventilation and air handling |  | 10d | 2027-09-28 | 2027-10-11 | 5.3 | 2027-03-01 | 2027-03-12 | 54d | 0d |
| 5.5 | Lift installation (2 units) |  | 15d | 2027-10-12 | 2027-11-01 | 5.4 | 2027-03-01 | 2027-03-19 | 54d | 0d |
| 5.6 | Sprinkler and fire alarm |  | 8d | 2027-11-02 | 2027-11-11 | 5.5 | 2027-03-01 | 2027-03-10 | 54d | 0d |
| 5.7 | Wellness building services |  | 10d | 2027-11-12 | 2027-11-25 | 5.6 | 2027-03-01 | 2027-03-12 | 54d | 0d |
| 5.8 | Hotel automation |  | 5d | 2027-11-26 | 2027-12-02 | 5.7 | 2027-03-01 | 2027-03-05 | 54d |  |
| 6 | **6. Fit-out** |  | 5d | 2027-10-20 | 2028-01-21 |  | 2027-03-01 | 2027-03-05 | 0d |  |
| 6.1 | Prefab room walls |  | 12d | 2027-10-20 | 2027-11-04 | 5.1 SS+39d | 2027-03-01 | 2027-03-16 | 0d |  |
| 6.2 | Prefab bathroom pods |  | 10d | 2027-11-05 | 2027-11-18 | 6.1 | 2027-03-01 | 2027-03-12 | 0d |  |
| 6.3 | Screeds and carpet |  | 8d | 2027-11-19 | 2027-11-30 | 6.2 | 2027-03-01 | 2027-03-10 | 0d |  |
| 6.4 | Luxury lobby finishes |  | 10d | 2027-12-01 | 2027-12-14 | 6.3 | 2027-03-01 | 2027-03-12 | 0d |  |
| 6.5 | Restaurant kitchen |  | 8d | 2027-12-15 | 2027-12-24 | 6.4 | 2027-03-01 | 2027-03-10 | 0d |  |
| 6.6 | Painting |  | 10d | 2027-12-27 | 2028-01-07 | 6.5 | 2027-03-01 | 2027-03-12 | 0d |  |
| 6.7 | Room furnishing |  | 10d | 2028-01-10 | 2028-01-21 | 6.6 | 2027-03-01 | 2027-03-12 | 0d |  |
| 7 | **7. Handover** |  | 5d | 2028-01-24 | 2028-02-16 |  | 2027-03-01 | 2027-03-05 | 0d |  |
| 7.1 | Finish roof terrace |  | 5d | 2028-01-24 | 2028-01-28 | 6.7 | 2027-03-01 | 2027-03-05 | 0d |  |
| 7.2 | External areas, boulevard |  | 8d | 2028-01-31 | 2028-02-09 | 7.1 | 2027-03-01 | 2027-03-10 | 0d |  |
| 7.3 | Testing and commissioning |  | 5d | 2028-02-10 | 2028-02-16 | 7.2 | 2027-03-01 | 2027-03-05 | 0d |  |
| 7.4 | Hotel handover | milestone | 0d | 2028-02-16 | 2028-02-16 | 7.3 | 2027-03-01 | 2027-03-01 | 0d |  |
