# Construction schedule v1.0

Schedule from an IFC model, 2027-03-01 to 2028-05-09, A marks actual dates.
De Vaart Apartment Complex

## Schedule

| ID | Activity | Type | Duration | Start | Finish | Predecessors | Complete | Planned start | Planned finish | Total float | Free float | Resources |
| --- | --- | --- | --- | --- | --- | --- | --- | --- | --- | --- | --- | --- |
| 1 | Start of Apartment Complex project | milestone | 0d | 2027-03-01 A | 2027-03-01 A |  | 100% |  |  | 1d | 0d |  |
| 2 | **1. Preparation & site clearance** |  | 28d | 2027-03-01 A | 2027-04-09 A |  | 100% | 2027-03-01 | 2027-03-05 | 0d |  |  |
| 2.1 | CPT soundings & soil investigation |  | 3d | 2027-03-01 A | 2027-03-03 A | 1 | 100% |  |  | 1d | 0d |  |
| 2.2 | Obtain building permit |  | 10d | 2027-03-04 A | 2027-03-17 A | 2.1 | 100% | 2027-03-01 | 2027-03-12 | 1d | 0d |  |
| 2.3 | Municipal road closure (permitted closure period) |  | 3d | 2027-03-11 A | 2027-03-15 A | 1 | 100% | 2027-03-01 | 2027-03-03 | 0d | 2d |  |
| 2.4 | Construct site road |  | 4d | 2027-03-18 A | 2027-03-23 A | 2.2, 2.3 | 100% | 2027-03-01 | 2027-03-04 | 1d | 0d |  |
| 2.5 | Place site huts |  | 2d | 2027-03-24 A | 2027-03-25 A | 2.4 | 100% | 2027-03-01 | 2027-03-02 | 1d | 0d |  |
| 2.6 | Install utility connections |  | 4d | 2027-03-30 A | 2027-04-02 A | 2.5 | 100% | 2027-03-01 | 2027-03-04 | 1d | 0d |  |
| 2.7 | Install dewatering |  | 5d | 2027-04-05 A | 2027-04-09 A | 2.6 | 100% | 2027-03-01 | 2027-03-05 | 1d | 0d |  |
| 2.8 | Site ready for construction | milestone | 0d | 2027-04-09 A | 2027-04-09 A | 2.7 | 100% | 2027-03-01 | 2027-03-01 | 1d | 0d |  |
| 3 | **2. Foundations & basement/car park** |  | 62d | 2027-04-12 A | 2027-07-12 |  | 94% | 2027-03-01 | 2027-03-05 | 0d |  |  |
| 3.1 | Commission dewatering |  | 2d | 2027-04-12 A | 2027-04-13 A | 2.8 | 100% | 2027-03-01 | 2027-03-02 | 1d | 0d |  |
| 3.2 | Excavation, building pit |  | 6d | 2027-04-14 A | 2027-04-21 A | 3.1 | 100% | 2027-03-01 | 2027-03-08 | 1d | 0d |  |
| 3.3 | Install sheet piling |  | 5d | 2027-04-22 A | 2027-04-29 A | 3.2 | 100% | 2027-03-01 | 2027-03-05 | 1d | 0d |  |
| 3.4 | Pour foundation beams (shared) |  | 4d | 2027-04-30 A | 2027-05-07 A | 3.3 | 100% | 2027-03-01 | 2027-03-04 | 1d | 0d | Concrete C30/37 |
| 3.5 | Basement earthworks — Tower A |  | 3d | 2027-05-10 A | 2027-05-12 A | 3.4 | 100% | 2027-03-01 | 2027-03-03 | 1d | 0d |  |
| 3.6 | Rebar fixing, basement floor — Tower A |  | 5d | 2027-05-13 A | 2027-05-20 A | 3.5 | 100% | 2027-03-01 | 2027-03-05 | 1d | 0d |  |
| 3.7 | Pour basement floor — Tower A |  | 5d | 2027-05-21 A | 2027-05-27 A | 3.6 | 100% | 2027-03-01 | 2027-03-05 | 1d | 0d | Concrete C30/37 |
| 3.8 | Rebar fixing, basement walls — Tower A |  | 5d | 2027-05-28 A | 2027-06-03 A | 3.7 | 100% | 2027-03-01 | 2027-03-05 | 1d | 0d |  |
| 3.9 | Pour basement walls — Tower A |  | 5d | 2027-06-04 A | 2027-06-10 A | 3.8 | 100% | 2027-03-01 | 2027-03-05 | 1d | 0d | Concrete C30/37 |
| 3.10 | Basement earthworks — Tower B |  | 3d | 2027-05-10 A | 2027-05-12 A | 3.4 | 100% | 2027-03-01 | 2027-03-03 | 1d | 0d |  |
| 3.11 | Rebar fixing, basement floor — Tower B |  | 5d | 2027-05-13 A | 2027-05-20 A | 3.10 | 100% | 2027-03-01 | 2027-03-05 | 1d | 0d |  |
| 3.12 | Pour basement floor — Tower B |  | 5d | 2027-05-21 A | 2027-05-27 A | 3.11 | 100% | 2027-03-01 | 2027-03-05 | 1d | 0d | Concrete C30/37 |
| 3.13 | Rebar fixing, basement walls — Tower B |  | 5d | 2027-05-28 A | 2027-06-03 A | 3.12 | 100% | 2027-03-01 | 2027-03-05 | 1d | 0d |  |
| 3.14 | Pour basement walls — Tower B |  | 5d | 2027-06-04 A | 2027-06-10 A | 3.13 | 100% | 2027-03-01 | 2027-03-05 | 1d | 0d | Concrete C30/37 |
| 3.15 | Basement earthworks — Tower C |  | 3d | 2027-05-10 A | 2027-05-12 A | 3.4 | 100% | 2027-03-01 | 2027-03-03 | 1d | 0d |  |
| 3.16 | Rebar fixing, basement floor — Tower C |  | 5d | 2027-05-13 A | 2027-05-20 A | 3.15 | 100% | 2027-03-01 | 2027-03-05 | 1d | 0d |  |
| 3.17 | Pour basement floor — Tower C |  | 5d | 2027-05-21 A | 2027-05-27 A | 3.16 | 100% | 2027-03-01 | 2027-03-05 | 1d | 0d | Concrete C30/37 |
| 3.18 | Rebar fixing, basement walls — Tower C |  | 5d | 2027-05-28 A | 2027-06-03 A | 3.17 | 100% | 2027-03-01 | 2027-03-05 | 1d | 0d |  |
| 3.19 | Pour basement walls — Tower C |  | 5d | 2027-06-04 A | 2027-06-10 A | 3.18 | 100% | 2027-03-01 | 2027-03-05 | 1d | 0d | Concrete C30/37 |
| 3.20 | Basement sealing |  | 3d | 2027-06-14 A | 2027-06-16 A | 3.9, 3.14, 3.19 | 100% | 2027-03-01 | 2027-03-03 | 0d |  |  |
| 3.21 | Backfill around basement |  | 3d | 2027-06-17 A | 2027-06-21 A | 3.20 | 100% | 2027-03-01 | 2027-03-03 | 0d |  |  |
| 3.22 | Pour parking deck (ground floor cover) |  | 5d | 2027-06-22 A | 2027-06-28 A | 3.21 | 100% | 2027-03-01 | 2027-03-05 | 0d |  | Concrete C30/37 |
| 3.23 | Remove sheet piling |  | 2d | 2027-06-29 A | 2027-06-30 A | 3.22 | 100% | 2027-03-01 | 2027-03-02 | 0d |  |  |
| 3.24 | Basement watertight — inspection | milestone | 0d | 2027-06-30 A | 2027-06-30 A | 3.23 | 100% | 2027-03-01 | 2027-03-01 | 0d |  |  |
| 3.25 | Variation: additional basement storage units |  | 6d | 2027-07-05 | 2027-07-12 | 3.24 |  | 2027-03-01 | 2027-03-08 | 195d | 64d |  |

Notes:
- 2.3: Hard pin (P6 Mandatory Start): the permitted closure date is fixed by the municipality and overrides the network logic.
- 2.6: Pinned (priority 1000): fixed connection date from the utility company, must not move.
- 3.25: Variation order issued after the contract baseline: additional storage units in the basement.

| ID | Activity | Type | Duration | Start | Finish | Predecessors | Complete | Planned start | Planned finish | Total float | Free float | Resources |
| --- | --- | --- | --- | --- | --- | --- | --- | --- | --- | --- | --- | --- |
| 4 | **3. Structural works, towers A/B/C (parallel)** |  | 74d | 2027-07-01 A | 2027-11-02 |  | 1% | 2027-03-01 | 2027-03-05 | 0d |  |  |
| 4.1 | Erect tower crane |  | 3d | 2027-07-01 A | 2027-07-05 A | 3.24 | 100% | 2027-03-01 | 2027-03-03 | 0d |  |  |
| 4.2 | **Structural works — Tower A** |  | 69d | 2027-07-06 | 2027-10-29 |  |  | 2027-03-01 | 2027-03-05 | 0d |  |  |
| 4.2.1 | Pour ground floor slab — Tower A |  | 4d | 2027-07-06 | 2027-07-09 | 4.1, 3.9 |  | 2027-03-01 | 2027-03-04 | 0d |  | Concrete C30/37 |
| 4.2.2 | Walls, floor 1 — Tower A |  | 4d | 2027-07-12 | 2027-07-15 | 4.2.1 |  | 2027-03-01 | 2027-03-04 | 0d |  | Steel fixers; Tower crane |
| 4.2.3 | Slab, floor 1 — Tower A |  | 3d | 2027-07-14 | 2027-07-16 | 4.2.2 SS+2d |  | 2027-03-01 | 2027-03-03 | 0d |  | Carpenters; Tower crane |
| 4.2.4 | Walls, floor 2 — Tower A |  | 4d | 2027-07-19 | 2027-07-22 | 4.2.3 |  | 2027-03-01 | 2027-03-04 | 0d |  | Steel fixers; Tower crane |
| 4.2.5 | Slab, floor 2 — Tower A |  | 3d | 2027-07-21 | 2027-07-23 | 4.2.4 SS+2d |  | 2027-03-01 | 2027-03-03 | 0d |  | Carpenters; Tower crane |
| 4.2.6 | Walls, floor 3 — Tower A |  | 4d | 2027-08-16 | 2027-08-19 | 4.2.5 |  | 2027-03-01 | 2027-03-04 | 0d |  | Steel fixers; Tower crane |
| 4.2.7 | Slab, floor 3 — Tower A |  | 3d | 2027-08-18 | 2027-08-20 | 4.2.6 SS+2d |  | 2027-03-01 | 2027-03-03 | 0d |  | Carpenters; Tower crane |
| 4.2.8 | Walls, floor 4 — Tower A |  | 4d | 2027-08-23 | 2027-08-26 | 4.2.7 |  | 2027-03-01 | 2027-03-04 | 0d |  | Steel fixers; Tower crane |
| 4.2.9 | Slab, floor 4 — Tower A |  | 3d | 2027-08-25 | 2027-08-27 | 4.2.8 SS+2d |  | 2027-03-01 | 2027-03-03 | 0d |  | Carpenters; Tower crane |
| 4.2.10 | Walls, floor 5 — Tower A |  | 4d | 2027-08-30 | 2027-09-02 | 4.2.9 |  | 2027-03-01 | 2027-03-04 | 0d |  | Steel fixers; Tower crane |
| 4.2.11 | Slab, floor 5 — Tower A |  | 3d | 2027-09-01 | 2027-09-03 | 4.2.10 SS+2d |  | 2027-03-01 | 2027-03-03 | 0d |  | Carpenters; Tower crane |
| 4.2.12 | Walls, floor 6 — Tower A |  | 4d | 2027-09-06 | 2027-09-09 | 4.2.11 |  | 2027-03-01 | 2027-03-04 | 0d |  | Steel fixers; Tower crane |
| 4.2.13 | Slab, floor 6 — Tower A |  | 3d | 2027-09-08 | 2027-09-10 | 4.2.12 SS+2d |  | 2027-03-01 | 2027-03-03 | 0d |  | Carpenters; Tower crane |
| 4.2.14 | Walls, floor 7 — Tower A |  | 4d | 2027-09-13 | 2027-09-16 | 4.2.13 |  | 2027-03-01 | 2027-03-04 | 0d |  | Steel fixers; Tower crane |
| 4.2.15 | Slab, floor 7 — Tower A |  | 3d | 2027-09-15 | 2027-09-17 | 4.2.14 SS+2d |  | 2027-03-01 | 2027-03-03 | 0d |  | Carpenters; Tower crane |
| 4.2.16 | Walls, floor 8 — Tower A |  | 4d | 2027-09-20 | 2027-09-23 | 4.2.15 |  | 2027-03-01 | 2027-03-04 | 0d |  | Steel fixers; Tower crane |
| 4.2.17 | Slab, floor 8 — Tower A |  | 3d | 2027-09-22 | 2027-09-24 | 4.2.16 SS+2d |  | 2027-03-01 | 2027-03-03 | 0d |  | Carpenters; Tower crane |
| 4.2.18 | Walls, floor 9 — Tower A |  | 4d | 2027-09-27 | 2027-09-30 | 4.2.17 |  | 2027-03-01 | 2027-03-04 | 0d |  | Steel fixers; Tower crane |
| 4.2.19 | Slab, floor 9 — Tower A |  | 3d | 2027-09-29 | 2027-10-01 | 4.2.18 SS+2d |  | 2027-03-01 | 2027-03-03 | 0d |  | Carpenters; Tower crane |
| 4.2.20 | Walls, floor 10 — Tower A |  | 4d | 2027-10-04 | 2027-10-07 | 4.2.19 |  | 2027-03-01 | 2027-03-04 | 0d |  | Steel fixers; Tower crane |
| 4.2.21 | Slab, floor 10 — Tower A |  | 3d | 2027-10-06 | 2027-10-08 | 4.2.20 SS+2d |  | 2027-03-01 | 2027-03-03 | 0d |  | Carpenters; Tower crane |
| 4.2.22 | Walls, floor 11 — Tower A |  | 4d | 2027-10-11 | 2027-10-14 | 4.2.21 |  | 2027-03-01 | 2027-03-04 | 0d |  | Steel fixers; Tower crane |
| 4.2.23 | Slab, floor 11 — Tower A |  | 3d | 2027-10-13 | 2027-10-15 | 4.2.22 SS+2d |  | 2027-03-01 | 2027-03-03 | 0d |  | Carpenters; Tower crane |
| 4.2.24 | Walls, floor 12 — Tower A |  | 4d | 2027-10-18 | 2027-10-21 | 4.2.23 |  | 2027-03-01 | 2027-03-04 | 0d |  | Steel fixers; Tower crane |
| 4.2.25 | Slab, floor 12 — Tower A |  | 3d | 2027-10-20 | 2027-10-22 | 4.2.24 SS+2d |  | 2027-03-01 | 2027-03-03 | 0d |  | Carpenters; Tower crane |
| 4.2.26 | Stair core & lift shaft — Tower A |  | 36d | 2027-07-06 | 2027-09-14 | 4.2.1 SS |  | 2027-03-01 | 2027-04-19 | 164d | 33d | Carpenters |
| 4.2.27 | Install roof structure — Tower A |  | 5d | 2027-10-25 | 2027-10-29 | 4.2.25 |  | 2027-03-01 | 2027-03-05 | 0d |  | Carpenters; Tower crane |
| 4.2.28 | Structural works complete — Tower A | milestone | 0d | 2027-10-29 | 2027-10-29 | 4.2.26, 4.2.27 |  | 2027-03-01 | 2027-03-01 | 131d | 0d |  |
| 4.2.29 | Structural works tower A (LOE) |  | 69d | 2027-07-06 | 2027-10-29 | 4.2.1 SS, 4.2.27 FF |  | 2027-03-01 | 2027-03-05 | 0d |  |  |

| ID | Activity | Type | Duration | Start | Finish | Predecessors | Planned start | Planned finish | Total float | Free float | Resources |
| --- | --- | --- | --- | --- | --- | --- | --- | --- | --- | --- | --- |
| 4.3 | **Structural works — Tower B** |  | 69d | 2027-07-06 | 2027-10-29 |  | 2027-03-01 | 2027-03-05 | 0d |  |  |
| 4.3.1 | Pour ground floor slab — Tower B |  | 4d | 2027-07-06 | 2027-07-09 | 4.1, 3.14 | 2027-03-01 | 2027-03-04 | 0d |  | Concrete C30/37 |
| 4.3.2 | Walls, floor 1 — Tower B |  | 4d | 2027-07-12 | 2027-07-15 | 4.3.1 | 2027-03-01 | 2027-03-04 | 0d |  | Steel fixers; Tower crane |
| 4.3.3 | Slab, floor 1 — Tower B |  | 3d | 2027-07-14 | 2027-07-16 | 4.3.2 SS+2d | 2027-03-01 | 2027-03-03 | 0d |  | Carpenters; Tower crane |
| 4.3.4 | Walls, floor 2 — Tower B |  | 4d | 2027-07-19 | 2027-07-22 | 4.3.3 | 2027-03-01 | 2027-03-04 | 0d |  | Steel fixers; Tower crane |
| 4.3.5 | Slab, floor 2 — Tower B |  | 3d | 2027-07-21 | 2027-07-23 | 4.3.4 SS+2d | 2027-03-01 | 2027-03-03 | 0d |  | Carpenters; Tower crane |
| 4.3.6 | Walls, floor 3 — Tower B |  | 4d | 2027-08-16 | 2027-08-19 | 4.3.5 | 2027-03-01 | 2027-03-04 | 0d |  | Steel fixers; Tower crane |
| 4.3.7 | Slab, floor 3 — Tower B |  | 3d | 2027-08-18 | 2027-08-20 | 4.3.6 SS+2d | 2027-03-01 | 2027-03-03 | 0d |  | Carpenters; Tower crane |
| 4.3.8 | Walls, floor 4 — Tower B |  | 4d | 2027-08-23 | 2027-08-26 | 4.3.7 | 2027-03-01 | 2027-03-04 | 0d |  | Steel fixers; Tower crane |
| 4.3.9 | Slab, floor 4 — Tower B |  | 3d | 2027-08-25 | 2027-08-27 | 4.3.8 SS+2d | 2027-03-01 | 2027-03-03 | 0d |  | Carpenters; Tower crane |
| 4.3.10 | Walls, floor 5 — Tower B |  | 4d | 2027-08-30 | 2027-09-02 | 4.3.9 | 2027-03-01 | 2027-03-04 | 0d |  | Steel fixers; Tower crane |
| 4.3.11 | Slab, floor 5 — Tower B |  | 3d | 2027-09-01 | 2027-09-03 | 4.3.10 SS+2d | 2027-03-01 | 2027-03-03 | 0d |  | Carpenters; Tower crane |
| 4.3.12 | Walls, floor 6 — Tower B |  | 4d | 2027-09-06 | 2027-09-09 | 4.3.11 | 2027-03-01 | 2027-03-04 | 0d |  | Steel fixers; Tower crane |
| 4.3.13 | Slab, floor 6 — Tower B |  | 3d | 2027-09-08 | 2027-09-10 | 4.3.12 SS+2d | 2027-03-01 | 2027-03-03 | 0d |  | Carpenters; Tower crane |
| 4.3.14 | Walls, floor 7 — Tower B |  | 4d | 2027-09-13 | 2027-09-16 | 4.3.13 | 2027-03-01 | 2027-03-04 | 0d |  | Steel fixers; Tower crane |
| 4.3.15 | Slab, floor 7 — Tower B |  | 3d | 2027-09-15 | 2027-09-17 | 4.3.14 SS+2d | 2027-03-01 | 2027-03-03 | 0d |  | Carpenters; Tower crane |
| 4.3.16 | Walls, floor 8 — Tower B |  | 4d | 2027-09-20 | 2027-09-23 | 4.3.15 | 2027-03-01 | 2027-03-04 | 0d |  | Steel fixers; Tower crane |
| 4.3.17 | Slab, floor 8 — Tower B |  | 3d | 2027-09-22 | 2027-09-24 | 4.3.16 SS+2d | 2027-03-01 | 2027-03-03 | 0d |  | Carpenters; Tower crane |
| 4.3.18 | Walls, floor 9 — Tower B |  | 4d | 2027-09-27 | 2027-09-30 | 4.3.17 | 2027-03-01 | 2027-03-04 | 0d |  | Steel fixers; Tower crane |
| 4.3.19 | Slab, floor 9 — Tower B |  | 3d | 2027-09-29 | 2027-10-01 | 4.3.18 SS+2d | 2027-03-01 | 2027-03-03 | 0d |  | Carpenters; Tower crane |
| 4.3.20 | Walls, floor 10 — Tower B |  | 4d | 2027-10-04 | 2027-10-07 | 4.3.19 | 2027-03-01 | 2027-03-04 | 0d |  | Steel fixers; Tower crane |
| 4.3.21 | Slab, floor 10 — Tower B |  | 3d | 2027-10-06 | 2027-10-08 | 4.3.20 SS+2d | 2027-03-01 | 2027-03-03 | 0d |  | Carpenters; Tower crane |
| 4.3.22 | Walls, floor 11 — Tower B |  | 4d | 2027-10-11 | 2027-10-14 | 4.3.21 | 2027-03-01 | 2027-03-04 | 0d |  | Steel fixers; Tower crane |
| 4.3.23 | Slab, floor 11 — Tower B |  | 3d | 2027-10-13 | 2027-10-15 | 4.3.22 SS+2d | 2027-03-01 | 2027-03-03 | 0d |  | Carpenters; Tower crane |
| 4.3.24 | Walls, floor 12 — Tower B |  | 4d | 2027-10-18 | 2027-10-21 | 4.3.23 | 2027-03-01 | 2027-03-04 | 0d |  | Steel fixers; Tower crane |
| 4.3.25 | Slab, floor 12 — Tower B |  | 3d | 2027-10-20 | 2027-10-22 | 4.3.24 SS+2d | 2027-03-01 | 2027-03-03 | 0d |  | Carpenters; Tower crane |
| 4.3.26 | Stair core & lift shaft — Tower B |  | 36d | 2027-07-06 | 2027-09-14 | 4.3.1 SS | 2027-03-01 | 2027-04-19 | 164d | 33d | Carpenters |
| 4.3.27 | Install roof structure — Tower B |  | 5d | 2027-10-25 | 2027-10-29 | 4.3.25 | 2027-03-01 | 2027-03-05 | 0d |  | Carpenters; Tower crane |
| 4.3.28 | Structural works complete — Tower B | milestone | 0d | 2027-10-29 | 2027-10-29 | 4.3.26, 4.3.27 | 2027-03-01 | 2027-03-01 | 131d | 0d |  |

| ID | Activity | Type | Duration | Start | Finish | Predecessors | Planned start | Planned finish | Total float | Free float | Resources |
| --- | --- | --- | --- | --- | --- | --- | --- | --- | --- | --- | --- |
| 4.4 | **Structural works — Tower C** |  | 69d | 2027-07-06 | 2027-10-29 |  | 2027-03-01 | 2027-03-05 | 3d | 0d |  |
| 4.4.1 | Pour ground floor slab — Tower C |  | 4d | 2027-07-06 | 2027-07-09 | 4.1, 3.19 | 2027-03-01 | 2027-03-04 | 3d | 0d | Concrete C30/37 |
| 4.4.2 | Walls, floor 1 — Tower C |  | 4d | 2027-07-12 | 2027-07-15 | 4.4.1 | 2027-03-01 | 2027-03-04 | 3d | 0d | Steel fixers; Tower crane |
| 4.4.3 | Slab, floor 1 — Tower C |  | 3d | 2027-07-14 | 2027-07-16 | 4.4.2 SS+2d | 2027-03-01 | 2027-03-03 | 3d | 0d | Carpenters; Tower crane |
| 4.4.4 | Walls, floor 2 — Tower C |  | 4d | 2027-07-19 | 2027-07-22 | 4.4.3 | 2027-03-01 | 2027-03-04 | 3d | 0d | Steel fixers; Tower crane |
| 4.4.5 | Slab, floor 2 — Tower C |  | 3d | 2027-07-21 | 2027-07-23 | 4.4.4 SS+2d | 2027-03-01 | 2027-03-03 | 3d | 0d | Carpenters; Tower crane |
| 4.4.6 | Walls, floor 3 — Tower C |  | 4d | 2027-08-16 | 2027-08-19 | 4.4.5 | 2027-03-01 | 2027-03-04 | 3d | 0d | Steel fixers; Tower crane |
| 4.4.7 | Slab, floor 3 — Tower C |  | 3d | 2027-08-18 | 2027-08-20 | 4.4.6 SS+2d | 2027-03-01 | 2027-03-03 | 3d | 0d | Carpenters; Tower crane |
| 4.4.8 | Walls, floor 4 — Tower C |  | 4d | 2027-08-23 | 2027-08-26 | 4.4.7 | 2027-03-01 | 2027-03-04 | 3d | 0d | Steel fixers; Tower crane |
| 4.4.9 | Slab, floor 4 — Tower C |  | 3d | 2027-08-25 | 2027-08-27 | 4.4.8 SS+2d | 2027-03-01 | 2027-03-03 | 3d | 0d | Carpenters; Tower crane |
| 4.4.10 | Walls, floor 5 — Tower C |  | 4d | 2027-08-30 | 2027-09-02 | 4.4.9 | 2027-03-01 | 2027-03-04 | 3d | 0d | Steel fixers; Tower crane |
| 4.4.11 | Slab, floor 5 — Tower C |  | 3d | 2027-09-01 | 2027-09-03 | 4.4.10 SS+2d | 2027-03-01 | 2027-03-03 | 3d | 0d | Carpenters; Tower crane |
| 4.4.12 | Walls, floor 6 — Tower C |  | 4d | 2027-09-06 | 2027-09-09 | 4.4.11 | 2027-03-01 | 2027-03-04 | 3d | 0d | Steel fixers; Tower crane |
| 4.4.13 | Slab, floor 6 — Tower C |  | 3d | 2027-09-08 | 2027-09-10 | 4.4.12 SS+2d | 2027-03-01 | 2027-03-03 | 3d | 0d | Carpenters; Tower crane |
| 4.4.14 | Walls, floor 7 — Tower C |  | 4d | 2027-09-13 | 2027-09-16 | 4.4.13 | 2027-03-01 | 2027-03-04 | 3d | 0d | Steel fixers; Tower crane |
| 4.4.15 | Slab, floor 7 — Tower C |  | 3d | 2027-09-15 | 2027-09-17 | 4.4.14 SS+2d | 2027-03-01 | 2027-03-03 | 3d | 0d | Carpenters; Tower crane |
| 4.4.16 | Walls, floor 8 — Tower C |  | 4d | 2027-09-20 | 2027-09-23 | 4.4.15 | 2027-03-01 | 2027-03-04 | 3d | 0d | Steel fixers; Tower crane |
| 4.4.17 | Slab, floor 8 — Tower C |  | 3d | 2027-09-22 | 2027-09-24 | 4.4.16 SS+2d | 2027-03-01 | 2027-03-03 | 3d | 0d | Carpenters; Tower crane |
| 4.4.18 | Walls, floor 9 — Tower C |  | 4d | 2027-09-27 | 2027-09-30 | 4.4.17 | 2027-03-01 | 2027-03-04 | 3d | 0d | Steel fixers; Tower crane |
| 4.4.19 | Slab, floor 9 — Tower C |  | 3d | 2027-09-29 | 2027-10-01 | 4.4.18 SS+2d | 2027-03-01 | 2027-03-03 | 3d | 0d | Carpenters; Tower crane |
| 4.4.20 | Walls, floor 10 — Tower C |  | 4d | 2027-10-04 | 2027-10-07 | 4.4.19 | 2027-03-01 | 2027-03-04 | 3d | 0d | Steel fixers; Tower crane |
| 4.4.21 | Slab, floor 10 — Tower C |  | 3d | 2027-10-06 | 2027-10-08 | 4.4.20 SS+2d | 2027-03-01 | 2027-03-03 | 3d | 0d | Carpenters; Tower crane |
| 4.4.22 | Walls, floor 11 — Tower C |  | 4d | 2027-10-11 | 2027-10-14 | 4.4.21 | 2027-03-01 | 2027-03-04 | 3d | 0d | Steel fixers; Tower crane |
| 4.4.23 | Slab, floor 11 — Tower C |  | 3d | 2027-10-13 | 2027-10-15 | 4.4.22 SS+2d | 2027-03-01 | 2027-03-03 | 3d | 0d | Carpenters; Tower crane |
| 4.4.24 | Walls, floor 12 — Tower C |  | 4d | 2027-10-18 | 2027-10-21 | 4.4.23 | 2027-03-01 | 2027-03-04 | 3d | 0d | Steel fixers; Tower crane |
| 4.4.25 | Slab, floor 12 — Tower C |  | 3d | 2027-10-20 | 2027-10-22 | 4.4.24 SS+2d | 2027-03-01 | 2027-03-03 | 3d | 0d | Carpenters; Tower crane |
| 4.4.26 | Stair core & lift shaft — Tower C |  | 36d | 2027-07-06 | 2027-09-14 | 4.4.1 SS | 2027-03-01 | 2027-04-19 | 164d | 33d | Carpenters |
| 4.4.27 | Install roof structure — Tower C |  | 5d | 2027-10-25 | 2027-10-29 | 4.4.25 | 2027-03-01 | 2027-03-05 | 3d | 0d | Carpenters; Tower crane |
| 4.4.28 | Structural works complete — Tower C | milestone | 0d | 2027-10-29 | 2027-10-29 | 4.4.26, 4.4.27 | 2027-03-01 | 2027-03-01 | 131d | 0d |  |
| 4.5 | Dismantle tower crane |  | 2d | 2027-11-01 | 2027-11-02 | 4.2.28, 4.3.28, 4.4.28, 3.25 | 2027-03-01 | 2027-03-02 | 131d |  |  |

| ID | Activity | Duration | Start | Finish | Predecessors | Planned start | Planned finish | Total float | Free float | Resources |
| --- | --- | --- | --- | --- | --- | --- | --- | --- | --- | --- |
| 5 | **4. Facade & roof** | 108d | 2027-07-05 | 2027-12-22 |  | 2027-03-01 | 2027-03-05 | 0d |  |  |
| 5.1 | **Facade & roof — Tower A** | 34d | 2027-11-01 | 2027-12-16 |  | 2027-03-01 | 2027-03-05 | 0d |  |  |
| 5.1.1 | Erect scaffolding — Tower A | 3d | 2027-11-01 | 2027-11-03 | 4.2.27 | 2027-03-01 | 2027-03-03 | 0d |  |  |
| 5.1.2 | Apply facade insulation — Tower A | 8d | 2027-11-04 | 2027-11-15 | 5.1.1 | 2027-03-01 | 2027-03-10 | 0d |  | Facade contractor |
| 5.1.3 | Install facade cladding — Tower A | 10d | 2027-11-16 | 2027-11-29 | 5.1.2 | 2027-03-01 | 2027-03-12 | 0d |  | Facade contractor |
| 5.1.4 | Install window frames — Tower A | 6d | 2027-11-30 | 2027-12-07 | 5.1.3 | 2027-03-01 | 2027-03-08 | 0d |  |  |
| 5.1.5 | Apply roof insulation — Tower A | 5d | 2027-11-01 | 2027-11-05 | 4.2.27 | 2027-03-01 | 2027-03-05 | 19d | 0d |  |
| 5.1.6 | Apply roofing — Tower A | 5d | 2027-11-08 | 2027-11-12 | 5.1.5 | 2027-03-01 | 2027-03-05 | 19d | 0d |  |
| 5.1.7 | Install balcony balustrades — Tower A | 5d | 2027-12-08 | 2027-12-14 | 5.1.4 | 2027-03-01 | 2027-03-05 | 0d |  |  |
| 5.1.8 | Connect rainwater drainage — Tower A | 3d | 2027-11-15 | 2027-11-17 | 5.1.6 | 2027-03-01 | 2027-03-03 | 19d |  |  |
| 5.1.9 | Strike scaffolding — Tower A | 2d | 2027-12-15 | 2027-12-16 | 5.1.7, 5.1.8 | 2027-03-01 | 2027-03-02 | 0d |  |  |
| 5.2 | **Facade & roof — Tower B** | 34d | 2027-11-01 | 2027-12-16 |  | 2027-03-01 | 2027-03-05 | 0d |  |  |
| 5.2.1 | Erect scaffolding — Tower B | 3d | 2027-11-01 | 2027-11-03 | 4.3.27 | 2027-03-01 | 2027-03-03 | 0d |  |  |
| 5.2.2 | Apply facade insulation — Tower B | 8d | 2027-11-04 | 2027-11-15 | 5.2.1 | 2027-03-01 | 2027-03-10 | 0d |  | Facade contractor |
| 5.2.3 | Install facade cladding — Tower B | 10d | 2027-11-16 | 2027-11-29 | 5.2.2 | 2027-03-01 | 2027-03-12 | 0d |  | Facade contractor |
| 5.2.4 | Install window frames — Tower B | 6d | 2027-11-30 | 2027-12-07 | 5.2.3 | 2027-03-01 | 2027-03-08 | 0d |  |  |
| 5.2.5 | Apply roof insulation — Tower B | 5d | 2027-11-01 | 2027-11-05 | 4.3.27 | 2027-03-01 | 2027-03-05 | 19d | 0d |  |
| 5.2.6 | Apply roofing — Tower B | 5d | 2027-11-08 | 2027-11-12 | 5.2.5 | 2027-03-01 | 2027-03-05 | 19d | 0d |  |
| 5.2.7 | Install balcony balustrades — Tower B | 5d | 2027-12-08 | 2027-12-14 | 5.2.4 | 2027-03-01 | 2027-03-05 | 0d |  |  |
| 5.2.8 | Connect rainwater drainage — Tower B | 3d | 2027-11-15 | 2027-11-17 | 5.2.6 | 2027-03-01 | 2027-03-03 | 19d |  |  |
| 5.2.9 | Strike scaffolding — Tower B | 2d | 2027-12-15 | 2027-12-16 | 5.2.7, 5.2.8 | 2027-03-01 | 2027-03-02 | 0d |  |  |
| 5.3 | **Facade & roof — Tower C** | 34d | 2027-11-01 | 2027-12-16 |  | 2027-03-01 | 2027-03-05 | 3d | 0d |  |
| 5.3.1 | Erect scaffolding — Tower C | 3d | 2027-11-01 | 2027-11-03 | 4.4.27 | 2027-03-01 | 2027-03-03 | 3d | 0d |  |
| 5.3.2 | Apply facade insulation — Tower C | 8d | 2027-11-04 | 2027-11-15 | 5.3.1 | 2027-03-01 | 2027-03-10 | 3d | 0d | Facade contractor |
| 5.3.3 | Install facade cladding — Tower C | 10d | 2027-11-16 | 2027-11-29 | 5.3.2 | 2027-03-01 | 2027-03-12 | 3d | 0d | Facade contractor |
| 5.3.4 | Install window frames — Tower C | 6d | 2027-11-30 | 2027-12-07 | 5.3.3 | 2027-03-01 | 2027-03-08 | 3d | 0d |  |
| 5.3.5 | Apply roof insulation — Tower C | 5d | 2027-11-01 | 2027-11-05 | 4.4.27 | 2027-03-01 | 2027-03-05 | 22d | 0d |  |
| 5.3.6 | Apply roofing — Tower C | 5d | 2027-11-08 | 2027-11-12 | 5.3.5 | 2027-03-01 | 2027-03-05 | 22d | 0d |  |
| 5.3.7 | Install balcony balustrades — Tower C | 5d | 2027-12-08 | 2027-12-14 | 5.3.4 | 2027-03-01 | 2027-03-05 | 3d | 0d |  |
| 5.3.8 | Connect rainwater drainage — Tower C | 3d | 2027-11-15 | 2027-11-17 | 5.3.6 | 2027-03-01 | 2027-03-03 | 22d | 19d |  |
| 5.3.9 | Strike scaffolding — Tower C | 2d | 2027-12-15 | 2027-12-16 | 5.3.7, 5.3.8 | 2027-03-01 | 2027-03-02 | 3d | 0d |  |
| 5.4 | Facade cladding, main entrance | 4d | 2027-12-17 | 2027-12-22 | 5.1.9 | 2027-03-01 | 2027-03-04 | 71d | 0d |  |
| 5.5 | Install parking deck canopy | 5d | 2027-07-05 | 2027-07-09 | 3.22 | 2027-03-01 | 2027-03-05 | 0d |  |  |

| ID | Activity | Type | Duration | Start | Finish | Predecessors | Planned start | Planned finish | Total float | Free float | Resources |
| --- | --- | --- | --- | --- | --- | --- | --- | --- | --- | --- | --- |
| 6 | **5. Building services (MEP)** |  | 37d | 2027-12-17 | 2028-02-07 |  | 2027-03-01 | 2027-03-05 | 0d |  |  |
| 6.1 | Install heating plant room |  | 6d | 2027-12-23 | 2027-12-30 | 5.4 | 2027-03-01 | 2027-03-08 | 78d | 0d |  |
| 6.2 | Connect main electrical distribution board |  | 4d | 2027-12-31 | 2028-01-05 | 6.1 | 2027-03-01 | 2027-03-04 | 78d | 0d |  |
| 6.3 | Install & test emergency generator |  | 3d | 2028-01-06 | 2028-01-10 | 6.2 | 2027-03-01 | 2027-03-03 | 78d | 0d |  |
| 6.4 | Fit out data centre server room |  | 4d | 2028-01-11 | 2028-01-14 | 6.3 | 2027-03-01 | 2027-03-04 | 78d |  |  |
| 6.5 | **Building services — Tower A** |  | 37d | 2027-12-17 | 2028-02-07 |  | 2027-03-01 | 2027-03-05 | 0d |  |  |
| 6.5.1 | Mechanical services — Tower A |  | 8d | 2027-12-17 | 2027-12-28 | 5.1.9 | 2027-03-01 | 2027-03-10 | 0d |  | MEP fitters |
| 6.5.2 | Install electrical services — Tower A |  | 7d | 2027-12-21 | 2027-12-29 | 6.5.1 SS+2d | 2027-03-01 | 2027-03-09 | 0d |  | MEP fitters |
| 6.5.3 | Connect ventilation ductwork — Tower A |  | 5d | 2027-12-30 | 2028-01-05 | 6.5.2 | 2027-03-01 | 2027-03-05 | 0d |  |  |
| 6.5.4 | Install sprinkler system — Tower A |  | 5d | 2028-01-06 | 2028-01-12 | 6.5.3 | 2027-03-01 | 2027-03-05 | 0d |  |  |
| 6.5.5 | Install data/ICT cabling — Tower A |  | 4d | 2028-01-13 | 2028-01-18 | 6.5.4 | 2027-03-01 | 2027-03-04 | 0d |  |  |
| 6.5.6 | Install fire alarm system — Tower A |  | 4d | 2028-01-19 | 2028-01-24 | 6.5.5 | 2027-03-01 | 2027-03-04 | 0d |  |  |
| 6.5.7 | Lift supply & installation — Tower A |  | 10d | 2028-01-25 | 2028-02-07 | 6.5.6 | 2027-03-01 | 2027-03-12 | 0d |  | Lift supplier |
| 6.5.8 | Services commissioning inspection — Tower A | milestone | 0d | 2028-02-07 | 2028-02-07 | 6.5.7 | 2027-03-01 | 2027-03-01 | 0d |  |  |
| 6.6 | **Building services — Tower B** |  | 37d | 2027-12-17 | 2028-02-07 |  | 2027-03-01 | 2027-03-05 | 0d |  |  |
| 6.6.1 | Mechanical services — Tower B |  | 8d | 2027-12-17 | 2027-12-28 | 5.2.9 | 2027-03-01 | 2027-03-10 | 0d |  | MEP fitters |
| 6.6.2 | Install electrical services — Tower B |  | 7d | 2027-12-21 | 2027-12-29 | 6.6.1 SS+2d | 2027-03-01 | 2027-03-09 | 0d |  | MEP fitters |
| 6.6.3 | Connect ventilation ductwork — Tower B |  | 5d | 2027-12-30 | 2028-01-05 | 6.6.2 | 2027-03-01 | 2027-03-05 | 0d |  |  |
| 6.6.4 | Install sprinkler system — Tower B |  | 5d | 2028-01-06 | 2028-01-12 | 6.6.3 | 2027-03-01 | 2027-03-05 | 0d |  |  |
| 6.6.5 | Install data/ICT cabling — Tower B |  | 4d | 2028-01-13 | 2028-01-18 | 6.6.4 | 2027-03-01 | 2027-03-04 | 0d |  |  |
| 6.6.6 | Install fire alarm system — Tower B |  | 4d | 2028-01-19 | 2028-01-24 | 6.6.5 | 2027-03-01 | 2027-03-04 | 0d |  |  |
| 6.6.7 | Lift supply & installation — Tower B |  | 10d | 2028-01-25 | 2028-02-07 | 6.6.6 | 2027-03-01 | 2027-03-12 | 0d |  | Lift supplier |
| 6.6.8 | Services commissioning inspection — Tower B | milestone | 0d | 2028-02-07 | 2028-02-07 | 6.6.7 | 2027-03-01 | 2027-03-01 | 0d |  |  |
| 6.7 | **Building services — Tower C** |  | 37d | 2027-12-17 | 2028-02-07 |  | 2027-03-01 | 2027-03-05 | 3d | 0d |  |
| 6.7.1 | Mechanical services — Tower C |  | 8d | 2027-12-17 | 2027-12-28 | 5.3.9 | 2027-03-01 | 2027-03-10 | 3d | 0d | MEP fitters |
| 6.7.2 | Install electrical services — Tower C |  | 7d | 2027-12-21 | 2027-12-29 | 6.7.1 SS+2d | 2027-03-01 | 2027-03-09 | 3d | 0d | MEP fitters |
| 6.7.3 | Connect ventilation ductwork — Tower C |  | 5d | 2027-12-30 | 2028-01-05 | 6.7.2 | 2027-03-01 | 2027-03-05 | 3d | 0d |  |
| 6.7.4 | Install sprinkler system — Tower C |  | 5d | 2028-01-06 | 2028-01-12 | 6.7.3 | 2027-03-01 | 2027-03-05 | 3d | 0d |  |
| 6.7.5 | Install data/ICT cabling — Tower C |  | 4d | 2028-01-13 | 2028-01-18 | 6.7.4 | 2027-03-01 | 2027-03-04 | 3d | 0d |  |
| 6.7.6 | Install fire alarm system — Tower C |  | 4d | 2028-01-19 | 2028-01-24 | 6.7.5 | 2027-03-01 | 2027-03-04 | 3d | 0d |  |
| 6.7.7 | Lift supply & installation — Tower C |  | 10d | 2028-01-25 | 2028-02-07 | 6.7.6 | 2027-03-01 | 2027-03-12 | 3d | 0d | Lift supplier |
| 6.7.8 | Services commissioning inspection — Tower C | milestone | 0d | 2028-02-07 | 2028-02-07 | 6.7.7 | 2027-03-01 | 2027-03-01 | 3d | 0d |  |

| ID | Activity | Duration | Start | Finish | Predecessors | Planned start | Planned finish | Total float | Free float | Resources |
| --- | --- | --- | --- | --- | --- | --- | --- | --- | --- | --- |
| 7 | **6. Fit-out** | 95d | 2027-12-23 | 2028-05-09 |  | 2027-03-01 | 2027-03-05 | 0d |  |  |
| 7.1 | **Fit-out — Tower A** | 62d | 2028-02-08 | 2028-05-09 |  | 2027-03-01 | 2027-03-05 | 0d |  |  |
| 7.1.1 | Plastering — Tower A | 15d | 2028-02-08 | 2028-02-28 | 6.5.8 | 2027-03-01 | 2027-03-16 | 0d |  | Plasterers |
| 7.1.2 | Tiling — Tower A | 10d | 2028-02-29 | 2028-03-13 | 7.1.1 | 2027-03-01 | 2027-03-12 | 0d |  | Tilers |
| 7.1.3 | Install kitchens — Tower A | 8d | 2028-03-14 | 2028-03-23 | 7.1.2 | 2027-03-01 | 2027-03-10 | 0d |  | Kitchen fitters |
| 7.1.4 | Install sanitary fittings — Tower A | 7d | 2028-03-24 | 2028-04-03 | 7.1.3 | 2027-03-01 | 2027-03-09 | 0d |  | MEP fitters |
| 7.1.5 | Painting — Tower A | 8d | 2028-04-04 | 2028-04-13 | 7.1.4 | 2027-03-01 | 2027-03-10 | 0d |  | Painters |
| 7.1.6 | Floor finishes — Tower A | 5d | 2028-04-18 | 2028-04-24 | 7.1.5 | 2027-03-01 | 2027-03-05 | 0d |  | Tilers |
| 7.1.7 | Finish ceilings — Tower A | 5d | 2028-04-25 | 2028-05-02 | 7.1.6 | 2027-03-01 | 2027-03-05 | 0d |  |  |
| 7.1.8 | Doors and ironmongery — Tower A | 4d | 2028-05-03 | 2028-05-09 | 7.1.7 | 2027-03-01 | 2027-03-04 | 0d |  |  |
| 7.2 | **Fit-out — Tower B** | 62d | 2028-02-08 | 2028-05-09 |  | 2027-03-01 | 2027-03-05 | 0d |  |  |
| 7.2.1 | Plastering — Tower B | 15d | 2028-02-08 | 2028-02-28 | 6.6.8 | 2027-03-01 | 2027-03-16 | 0d |  | Plasterers |
| 7.2.2 | Tiling — Tower B | 10d | 2028-02-29 | 2028-03-13 | 7.2.1 | 2027-03-01 | 2027-03-12 | 0d |  | Tilers |
| 7.2.3 | Install kitchens — Tower B | 8d | 2028-03-14 | 2028-03-23 | 7.2.2 | 2027-03-01 | 2027-03-10 | 0d |  | Kitchen fitters |
| 7.2.4 | Install sanitary fittings — Tower B | 7d | 2028-03-24 | 2028-04-03 | 7.2.3 | 2027-03-01 | 2027-03-09 | 0d |  | MEP fitters |
| 7.2.5 | Painting — Tower B | 8d | 2028-04-04 | 2028-04-13 | 7.2.4 | 2027-03-01 | 2027-03-10 | 0d |  | Painters |
| 7.2.6 | Floor finishes — Tower B | 5d | 2028-04-18 | 2028-04-24 | 7.2.5 | 2027-03-01 | 2027-03-05 | 0d |  | Tilers |
| 7.2.7 | Finish ceilings — Tower B | 5d | 2028-04-25 | 2028-05-02 | 7.2.6 | 2027-03-01 | 2027-03-05 | 0d |  |  |
| 7.2.8 | Doors and ironmongery — Tower B | 4d | 2028-05-03 | 2028-05-09 | 7.2.7 | 2027-03-01 | 2027-03-04 | 0d |  |  |
| 7.3 | **Fit-out — Tower C** | 59d | 2028-02-08 | 2028-05-03 |  | 2027-03-01 | 2027-03-05 | 3d | 0d |  |
| 7.3.1 | Plastering — Tower C | 12d | 2028-02-08 | 2028-02-23 | 6.7.8 | 2027-03-01 | 2027-03-16 | 3d | 0d | Plasterers |
| 7.3.2 | Tiling — Tower C | 10d | 2028-02-24 | 2028-03-08 | 7.3.1 | 2027-03-01 | 2027-03-12 | 3d | 0d | Tilers |
| 7.3.3 | Install kitchens — Tower C | 8d | 2028-03-09 | 2028-03-20 | 7.3.2 | 2027-03-01 | 2027-03-10 | 3d | 0d | Kitchen fitters |
| 7.3.4 | Install sanitary fittings — Tower C | 7d | 2028-03-21 | 2028-03-29 | 7.3.3 | 2027-03-01 | 2027-03-09 | 3d | 0d | MEP fitters |
| 7.3.5 | Painting — Tower C | 8d | 2028-03-30 | 2028-04-10 | 7.3.4 | 2027-03-01 | 2027-03-10 | 3d | 0d | Painters |
| 7.3.6 | Floor finishes — Tower C | 5d | 2028-04-11 | 2028-04-19 | 7.3.5 | 2027-03-01 | 2027-03-05 | 3d | 0d | Tilers |
| 7.3.7 | Finish ceilings — Tower C | 5d | 2028-04-20 | 2028-04-26 | 7.3.6 | 2027-03-01 | 2027-03-05 | 3d | 0d |  |
| 7.3.8 | Doors and ironmongery — Tower C | 4d | 2028-04-28 | 2028-05-03 | 7.3.7 | 2027-03-01 | 2027-03-04 | 3d | 0d |  |
| 7.4 | Finish entrance hall | 6d | 2027-12-23 | 2027-12-30 | 5.4 | 2027-03-01 | 2027-03-08 | 71d | 0d |  |
| 7.5 | Finish bicycle store | 4d | 2027-12-31 | 2028-01-05 | 7.4 | 2027-03-01 | 2027-03-04 | 85d |  |  |
| 7.6 | Finish lift lobbies | 4d | 2027-12-31 | 2028-01-05 | 7.4 | 2027-03-01 | 2027-03-04 | 71d | 0d |  |
| 7.7 | Finish communal stair cores | 5d | 2028-01-06 | 2028-01-12 | 7.6 | 2027-03-01 | 2027-03-05 | 71d | 0d |  |
| 7.8 | External painting, facade plinth | 4d | 2028-01-13 | 2028-01-18 | 7.7 | 2027-03-01 | 2027-03-04 | 71d | 0d |  |
| 7.9 | Install signage & wayfinding | 2d | 2028-01-19 | 2028-01-20 | 7.8 | 2027-03-01 | 2027-03-02 | 71d | 0d |  |
| 7.10 | Final cleaning of communal areas | 3d | 2028-01-21 | 2028-01-25 | 7.9 | 2027-03-01 | 2027-03-03 | 71d |  |  |

| ID | Activity | Type | Duration | Start | Finish | Predecessors | Planned start | Planned finish | Total float |
| --- | --- | --- | --- | --- | --- | --- | --- | --- | --- |
| 8 | **7. Car park & site works** |  | 189d | 2027-07-12 | 2028-04-24 |  | 2027-03-01 | 2027-03-05 | 0d |
| 8.1 | Internal walls, storage units & stair cores, car park |  | 30d | 2027-07-12 | 2027-09-10 | 5.5 | 2027-03-01 | 2027-04-09 | 0d |
| 8.2 | Pipework & cable trays, car park |  | 24d | 2027-09-13 | 2027-10-14 | 8.1 | 2027-03-01 | 2027-04-01 | 0d |
| 8.3 | Ventilation & smoke extraction system, car park |  | 22d | 2027-10-15 | 2027-11-15 | 8.2 | 2027-03-01 | 2027-03-30 | 0d |
| 8.4 | Sprinkler & dry riser, car park |  | 16d | 2027-11-16 | 2027-12-07 | 8.3 | 2027-03-01 | 2027-03-22 | 0d |
| 8.5 | Power, lighting & emergency lighting, car park |  | 16d | 2027-12-08 | 2027-12-29 | 8.4 | 2027-03-01 | 2027-03-22 | 0d |
| 8.6 | Fire alarm & evacuation system, car park |  | 10d | 2027-12-30 | 2028-01-12 | 8.5 | 2027-03-01 | 2027-03-12 | 0d |
| 8.7 | EV charging infrastructure |  | 10d | 2028-01-13 | 2028-01-26 | 8.6 | 2027-03-01 | 2027-03-12 | 0d |
| 8.8 | Floor coating & line marking, car park |  | 14d | 2028-01-27 | 2028-02-15 | 8.7 | 2027-03-01 | 2027-03-18 | 0d |
| 8.9 | Access control, barriers & parking management system |  | 10d | 2028-02-16 | 2028-02-29 | 8.8 | 2027-03-01 | 2027-03-12 | 0d |
| 8.10 | Commission & test car park services |  | 12d | 2028-03-01 | 2028-03-16 | 8.9 | 2027-03-01 | 2027-03-16 | 0d |
| 8.11 | Car park safety inspection | milestone | 0d | 2028-03-16 | 2028-03-16 | 8.10 | 2027-03-01 | 2027-03-01 | 0d |
| 8.12 | Construct new main access road |  | 4d | 2028-03-17 | 2028-03-22 | 8.11 | 2027-03-01 | 2027-03-04 | 0d |
| 8.13 | New main access road in use | milestone | 0d | 2028-03-23 | 2028-03-23 | 8.12 | 2027-03-01 | 2027-03-01 | 0d |
| 8.14 | Break up temporary site road |  | 3d | 2028-03-21 | 2028-03-23 | 8.13 SF | 2027-03-01 | 2027-03-03 | 20d |
| 8.15 | Site sewer connection, main building |  | 4d | 2028-03-23 | 2028-03-28 | 8.13 | 2027-03-01 | 2027-03-04 | 0d |
| 8.16 | Car park paving |  | 6d | 2028-03-29 | 2028-04-05 | 8.15 | 2027-03-01 | 2027-03-08 | 0d |
| 8.17 | Install outdoor bicycle shelter |  | 3d | 2028-04-06 | 2028-04-10 | 8.16 | 2027-03-01 | 2027-03-03 | 8d |
| 8.18 | Install landscaping, main site |  | 5d | 2028-04-06 | 2028-04-12 | 8.16 | 2027-03-01 | 2027-03-05 | 0d |
| 8.19 | Install external lighting |  | 3d | 2028-04-13 | 2028-04-19 | 8.18 | 2027-03-01 | 2027-03-03 | 0d |
| 8.20 | Install boundary fencing |  | 2d | 2028-04-20 | 2028-04-21 | 8.19 | 2027-03-01 | 2027-03-02 | 0d |
| 8.21 | Mark out parking bays |  | 1d | 2028-04-24 | 2028-04-24 | 8.20 | 2027-03-01 | 2027-03-01 | 0d |
| 8.22 | Site handover — final inspection | milestone | 0d | 2028-04-24 | 2028-04-24 | 8.21, 8.14, 8.17 | 2027-03-01 | 2027-03-01 | 0d |
| 9 | **8. Handover** |  | 9d | 2028-04-25 | 2028-05-09 |  | 2027-03-01 | 2027-03-05 | 0d |
| 9.1 | Handover inspection — Tower A | milestone | 0d | 2028-05-09 | 2028-05-09 | 7.1.8, 8.22 | 2027-03-01 | 2027-03-01 | 0d |
| 9.2 | Handover inspection — Tower B | milestone | 0d | 2028-05-09 | 2028-05-09 | 7.2.8, 8.22 | 2027-03-01 | 2027-03-01 | 0d |
| 9.3 | Handover inspection — Tower C | milestone | 0d | 2028-05-03 | 2028-05-03 | 7.3.8, 8.22 | 2027-03-01 | 2027-03-01 | 3d |
| 9.4 | Documentation handover (as-built drawings) |  | 3d | 2028-04-25 | 2028-04-28 | 8.22 | 2027-03-01 | 2027-03-03 | 0d |
| 9.5 | Key handover to the building manager |  | 2d | 2028-05-04 | 2028-05-08 | 9.6 | 2027-03-01 | 2027-03-02 | 0d |
| 9.6 | Final cleaning of communal areas, building |  | 3d | 2028-05-01 | 2028-05-03 | 9.4 | 2027-03-01 | 2027-03-03 | 0d |
| 9.7 | Project administration & contractual close-out | milestone | 0d | 2028-05-08 | 2028-05-08 | 9.5 | 2027-03-01 | 2027-03-01 | 0d |
| 9.8 | Aftercare period started | milestone | 0d | 2028-05-09 | 2028-05-09 | 9.7 | 2027-03-01 | 2027-03-01 | 0d |
| 9.9 | Start maintenance contract for building services |  | 1d | 2028-05-09 | 2028-05-09 | 9.8 | 2027-03-01 | 2027-03-01 | 0d |

Notes:
- 8.11: Closes out the car park fit-out stream — the second critical chain in this project, independent of the towers.
- 9.1: Contractual handover of Tower A to the owners' association/residents — an independent end point (no shared final milestone with the other towers).
- 9.2: Contractual handover of Tower B to the owners' association/residents — an independent end point (no shared final milestone with the other towers).
- 9.3: Contractual handover of Tower C to the owners' association/residents — an independent end point (no shared final milestone with the other towers).
- 9.7: Contractual/administrative close-out (as-built dossier, handover to the building manager) — runs in parallel from site handover onwards, not gated by the towers (see phase notes).
