# Construction schedule v1.0

Schedule from an IFC model, 2027-03-01 to 2027-08-17, A marks actual dates.
6 New Terraced Houses, De Akkers

## Schedule

| ID | Activity | Type | Duration | Start | Finish | Predecessors | Complete | Planned start | Planned finish | Total float | Free float | Resources |
| --- | --- | --- | --- | --- | --- | --- | --- | --- | --- | --- | --- | --- |
| 1 | Start of construction | milestone | 0d | 2027-03-01 A | 2027-03-01 A |  | 100% |  |  | 0d |  |  |
| 2 | **1. Site set-up** |  | 5d | 2027-03-01 | 2027-03-12 |  |  | 2027-03-01 | 2027-03-05 | 0d |  |  |
| 2.1 | Install site board & safety fencing |  | 1d | 2027-03-01 A | 2027-03-02 A | 1 | 100% | 2027-03-01 | 2027-03-01 | 0d |  |  |
| 2.2 | Construct site road |  | 3d | 2027-03-02 A | 2027-03-05 A | 2.1 | 100% | 2027-03-01 | 2027-03-03 | 0d |  |  |
| 2.3 | Place site huts |  | 2d | 2027-03-05 A | 2027-03-09 A | 2.2 | 100% | 2027-03-01 | 2027-03-02 | 0d |  |  |
| 2.4 | Install utility connections |  | 3d | 2027-03-09 A | 2027-03-12 A | 2.3 | 100% | 2027-03-01 | 2027-03-03 | 0d |  |  |
| 3 | **2. Foundations (shared)** |  | 5d | 2027-03-12 | 2027-04-07 |  |  | 2027-03-01 | 2027-03-05 | 0d |  |  |
| 3.1 | Excavation, building pit |  | 5d | 2027-03-12 A | 2027-03-19 A | 2.4 | 100% | 2027-03-01 | 2027-03-05 | 0d |  |  |
| 3.2 | Pour foundation beams |  | 5d | 2027-03-19 A | 2027-03-29 A | 3.1 | 100% | 2027-03-01 | 2027-03-05 | 0d | 2d | Concrete C20/25 |
| 3.3 | Pour ground floor slab |  | 4d | 2027-04-01 A | 2027-04-07 A | 3.2 FS+3d | 100% | 2027-03-01 | 2027-03-04 | 0d |  | Concrete C20/25 |
| 3.4 | Foundation inspection | milestone | 0d | 2027-04-07 A | 2027-04-07 A | 3.3 | 100% | 2027-03-01 | 2027-03-01 | 0d |  |  |
| 4 | **3. Structural works per house** |  | 5d | 2027-04-07 | 2027-06-25 |  |  | 2027-03-01 | 2027-03-05 | 0d |  |  |
| 4.1 | Ground floor masonry â House 1 |  | 6d | 2027-04-07 A | 2027-04-15 A | 3.4 | 100% | 2027-03-01 | 2027-03-08 | 0d |  | Masonry crew; Bricklayers |
| 4.2 | Upper floor slab â House 1 |  | 4d | 2027-04-15 A | 2027-04-21 A | 4.1 | 100% | 2027-03-01 | 2027-03-04 | 25d | 0d |  |
| 4.3 | Upper floor masonry â House 1 |  | 6d | 2027-04-21 A | 2027-04-29 A | 4.2 | 100% | 2027-03-01 | 2027-03-08 | 26d | 0d | Bricklayers |
| 4.4 | Roof structure â House 1 |  | 5d | 2027-04-29 A | 2027-05-06 A | 4.3 | 100% | 2027-03-01 | 2027-03-05 | 28d | 8d | Carpenters |
| 4.5 | Ground floor masonry â House 2 |  | 6d | 2027-04-15 A | 2027-04-23 A | 4.1 | 100% | 2027-03-01 | 2027-03-08 | 0d |  | Masonry crew; Bricklayers |
| 4.6 | Upper floor slab â House 2 |  | 4d | 2027-04-23 A | 2027-04-29 A | 4.5 | 100% | 2027-03-01 | 2027-03-04 | 19d | 0d |  |
| 4.7 | Upper floor masonry â House 2 |  | 6d | 2027-04-29 A | 2027-05-07 A | 4.6 | 100% | 2027-03-01 | 2027-03-08 | 21d | 0d | Bricklayers |
| 4.8 | Roof structure â House 2 |  | 5d | 2027-05-07 A | 2027-05-14 A | 4.7 | 100% | 2027-03-01 | 2027-03-05 | 21d | 2d | Carpenters |
| 4.9 | Ground floor masonry â House 3 |  | 6d | 2027-04-23 A | 2027-05-03 A | 4.5 | 100% | 2027-03-01 | 2027-03-08 | 0d |  | Masonry crew; Bricklayers |
| 4.10 | Upper floor slab â House 3 |  | 4d | 2027-05-03 A | 2027-05-07 A | 4.9 | 100% | 2027-03-01 | 2027-03-04 | 15d | 0d |  |
| 4.11 | Upper floor masonry â House 3 |  | 6d | 2027-05-07 A | 2027-05-17 A | 4.10 | 100% | 2027-03-01 | 2027-03-08 | 16d | 0d | Bricklayers |
| 4.12 | Roof structure â House 3 |  | 5d | 2027-05-17 A | 2027-05-20 A | 4.11 | 100% | 2027-03-01 | 2027-03-05 | 18d | 0d | Carpenters |
| 4.13 | Ground floor masonry â House 4 |  | 6d | 2027-05-04 A | 2027-05-11 A | 4.9 | 100% | 2027-03-01 | 2027-03-08 | 0d |  | Masonry crew; Bricklayers |
| 4.14 | Upper floor slab â House 4 |  | 4d | 2027-05-11 A | 2027-05-21 | 4.13 | 50% | 2027-03-01 | 2027-03-04 | 6d | 0d |  |
| 4.15 | Upper floor masonry â House 4 |  | 6d | 2027-05-24 | 2027-05-31 | 4.14 |  | 2027-03-01 | 2027-03-08 | 6d | 0d | Bricklayers |
| 4.16 | Roof structure â House 4 |  | 5d | 2027-06-01 | 2027-06-07 | 4.15 |  | 2027-03-01 | 2027-03-05 | 6d | 0d | Carpenters |
| 4.17 | Ground floor masonry â House 5 |  | 6d | 2027-05-20 | 2027-05-27 | 4.13 |  | 2027-03-01 | 2027-03-08 | 0d |  | Masonry crew; Bricklayers |
| 4.18 | Upper floor slab â House 5 |  | 4d | 2027-05-28 | 2027-06-02 | 4.17 |  | 2027-03-01 | 2027-03-04 | 0d |  |  |
| 4.19 | Upper floor masonry â House 5 |  | 6d | 2027-06-03 | 2027-06-10 | 4.18 |  | 2027-03-01 | 2027-03-08 | 0d |  | Bricklayers |
| 4.20 | Roof structure â House 5 |  | 5d | 2027-06-11 | 2027-06-17 | 4.19 |  | 2027-03-01 | 2027-03-05 | 0d |  | Carpenters |
| 4.21 | Ground floor masonry â House 6 |  | 6d | 2027-05-28 | 2027-06-04 | 4.17 |  | 2027-03-01 | 2027-03-08 | 0d |  | Masonry crew; Bricklayers |
| 4.22 | Upper floor slab â House 6 |  | 4d | 2027-06-07 | 2027-06-10 | 4.21 |  | 2027-03-01 | 2027-03-04 | 0d |  |  |
| 4.23 | Upper floor masonry â House 6 |  | 6d | 2027-06-11 | 2027-06-18 | 4.22 |  | 2027-03-01 | 2027-03-08 | 0d |  | Bricklayers |
| 4.24 | Roof structure â House 6 |  | 5d | 2027-06-21 | 2027-06-25 | 4.23 |  | 2027-03-01 | 2027-03-05 | 0d |  | Carpenters |
| 4.25 | Topping out reached | milestone | 0d | 2027-06-25 | 2027-06-25 | 4.4, 4.8, 4.12, 4.16, 4.20, 4.24 |  | 2027-03-01 | 2027-03-01 | 22d |  |  |

Notes:
- 2.4: Pinned (priority 1000): the connection date is fixed by the utility company and must not move.

| ID | Activity | Duration | Start | Finish | Predecessors | Planned start | Planned finish | Total float | Free float | Resources |
| --- | --- | --- | --- | --- | --- | --- | --- | --- | --- | --- |
| 5 | **4. Building services** | 5d | 2027-05-20 | 2027-07-06 |  | 2027-03-01 | 2027-03-05 | 0d |  |  |
| 5.1 | Plumbing â House 1 | 3d | 2027-05-20 | 2027-05-24 | 4.4 | 2027-03-01 | 2027-03-03 | 20d | 0d | MEP fitters |
| 5.2 | Electrical â House 1 | 3d | 2027-05-25 | 2027-05-27 | 5.1 | 2027-03-01 | 2027-03-03 | 20d | 0d | MEP fitters |
| 5.3 | Services commissioning inspection â House 1 | 1d | 2027-05-27 | 2027-05-27 | 5.2 FS-1d | 2027-03-01 | 2027-03-01 | 20d | 0d |  |
| 5.4 | Plumbing â House 2 | 3d | 2027-05-20 | 2027-05-24 | 4.8 | 2027-03-01 | 2027-03-03 | 19d | 0d | MEP fitters |
| 5.5 | Electrical â House 2 | 3d | 2027-05-25 | 2027-05-27 | 5.4 | 2027-03-01 | 2027-03-03 | 19d | 0d | MEP fitters |
| 5.6 | Services commissioning inspection â House 2 | 1d | 2027-05-28 | 2027-05-28 | 5.5 | 2027-03-01 | 2027-03-01 | 19d | 0d |  |
| 5.7 | Plumbing â House 3 | 3d | 2027-05-21 | 2027-05-25 | 4.12 | 2027-03-01 | 2027-03-03 | 18d | 0d | MEP fitters |
| 5.8 | Electrical â House 3 | 3d | 2027-05-26 | 2027-05-28 | 5.7 | 2027-03-01 | 2027-03-03 | 18d | 0d | MEP fitters |
| 5.9 | Services commissioning inspection â House 3 | 1d | 2027-05-31 | 2027-05-31 | 5.8 | 2027-03-01 | 2027-03-01 | 18d | 0d |  |
| 5.10 | Plumbing â House 4 | 3d | 2027-06-08 | 2027-06-10 | 4.16 | 2027-03-01 | 2027-03-03 | 6d | 0d | MEP fitters |
| 5.11 | Electrical â House 4 | 3d | 2027-06-11 | 2027-06-15 | 5.10 | 2027-03-01 | 2027-03-03 | 6d | 0d | MEP fitters |
| 5.12 | Services commissioning inspection â House 4 | 1d | 2027-06-16 | 2027-06-16 | 5.11 | 2027-03-01 | 2027-03-01 | 6d | 0d |  |
| 5.13 | Plumbing â House 5 | 3d | 2027-06-18 | 2027-06-22 | 4.20 | 2027-03-01 | 2027-03-03 | 0d |  | MEP fitters |
| 5.14 | Electrical â House 5 | 3d | 2027-06-23 | 2027-06-25 | 5.13 | 2027-03-01 | 2027-03-03 | 0d |  | MEP fitters |
| 5.15 | Services commissioning inspection â House 5 | 1d | 2027-06-28 | 2027-06-28 | 5.14 | 2027-03-01 | 2027-03-01 | 0d |  |  |
| 5.16 | Plumbing â House 6 | 3d | 2027-06-28 | 2027-06-30 | 4.24 | 2027-03-01 | 2027-03-03 | 0d |  | MEP fitters |
| 5.17 | Electrical â House 6 | 3d | 2027-07-01 | 2027-07-05 | 5.16 | 2027-03-01 | 2027-03-03 | 0d |  | MEP fitters |
| 5.18 | Services commissioning inspection â House 6 | 1d | 2027-07-06 | 2027-07-06 | 5.17 | 2027-03-01 | 2027-03-01 | 0d |  |  |
| 6 | **5. Fit-out** | 5d | 2027-05-28 | 2027-08-17 |  | 2027-03-01 | 2027-03-05 | 0d |  |  |
| 6.1 | Plastering â House 1 | 5d | 2027-05-28 | 2027-06-03 | 5.3 | 2027-03-01 | 2027-03-05 | 20d | 0d | Plasterers |
| 6.2 | Tiling â House 1 | 3d | 2027-06-04 | 2027-06-08 | 6.1 | 2027-03-01 | 2027-03-03 | 22d | 0d |  |
| 6.3 | Install sanitary fittings â House 1 | 3d | 2027-06-09 | 2027-06-11 | 6.2 | 2027-03-01 | 2027-03-03 | 22d | 0d |  |
| 6.4 | Painting â House 1 | 4d | 2027-06-10 | 2027-06-15 | 6.3 SS | 2027-03-01 | 2027-03-04 | 22d | 0d | Painters |
| 6.5 | Plastering â House 2 | 5d | 2027-05-31 | 2027-06-04 | 5.6, 6.1 SS | 2027-03-01 | 2027-03-05 | 19d | 0d | Plasterers |
| 6.6 | Tiling â House 2 | 3d | 2027-06-07 | 2027-06-09 | 6.5 | 2027-03-01 | 2027-03-03 | 19d | 0d |  |
| 6.7 | Install sanitary fittings â House 2 | 3d | 2027-06-10 | 2027-06-14 | 6.6 | 2027-03-01 | 2027-03-03 | 19d | 0d |  |
| 6.8 | Painting â House 2 | 4d | 2027-06-15 | 2027-06-18 | 6.7 | 2027-03-01 | 2027-03-04 | 19d | 0d | Painters |
| 6.9 | Plastering â House 3 | 5d | 2027-06-01 | 2027-06-07 | 5.9 | 2027-03-01 | 2027-03-05 | 18d | 0d | Plasterers |
| 6.10 | Tiling â House 3 | 3d | 2027-06-08 | 2027-06-10 | 6.9 | 2027-03-01 | 2027-03-03 | 18d | 0d |  |
| 6.11 | Install sanitary fittings â House 3 | 3d | 2027-06-11 | 2027-06-15 | 6.10 | 2027-03-01 | 2027-03-03 | 18d | 0d |  |
| 6.12 | Painting â House 3 | 4d | 2027-06-16 | 2027-06-21 | 6.11 | 2027-03-01 | 2027-03-04 | 18d | 0d | Painters |
| 6.13 | Plastering â House 4 | 5d | 2027-06-17 | 2027-06-23 | 5.12 | 2027-03-01 | 2027-03-05 | 6d | 0d | Plasterers |
| 6.14 | Tiling â House 4 | 3d | 2027-06-24 | 2027-06-28 | 6.13 | 2027-03-01 | 2027-03-03 | 6d | 0d |  |
| 6.15 | Install sanitary fittings â House 4 | 3d | 2027-06-29 | 2027-07-01 | 6.14 | 2027-03-01 | 2027-03-03 | 6d | 0d |  |
| 6.16 | Painting â House 4 | 4d | 2027-07-02 | 2027-07-07 | 6.15 | 2027-03-01 | 2027-03-04 | 6d | 0d | Painters |
| 6.17 | Plastering â House 5 | 5d | 2027-06-29 | 2027-07-05 | 5.15 | 2027-03-01 | 2027-03-05 | 0d |  | Plasterers |
| 6.18 | Tiling â House 5 | 3d | 2027-07-06 | 2027-07-08 | 6.17 | 2027-03-01 | 2027-03-03 | 0d |  |  |
| 6.19 | Install sanitary fittings â House 5 | 3d | 2027-07-09 | 2027-07-13 | 6.18 | 2027-03-01 | 2027-03-03 | 0d |  |  |
| 6.20 | Painting â House 5 | 4d | 2027-07-14 | 2027-07-19 | 6.19 | 2027-03-01 | 2027-03-04 | 0d |  | Painters |
| 6.21 | Plastering â House 6 | 5d | 2027-07-07 | 2027-07-13 | 5.18 | 2027-03-01 | 2027-03-05 | 0d |  | Plasterers |
| 6.22 | Tiling â House 6 | 3d | 2027-07-14 | 2027-07-16 | 6.21 | 2027-03-01 | 2027-03-03 | 0d |  |  |
| 6.23 | Install sanitary fittings â House 6 | 3d | 2027-07-19 | 2027-07-21 | 6.22 | 2027-03-01 | 2027-03-03 | 0d |  |  |
| 6.24 | Painting â House 6 | 4d | 2027-07-22 | 2027-08-17 | 6.23 | 2027-03-01 | 2027-03-04 | 0d |  | Painters |

| ID | Activity | Type | Duration | Start | Finish | Predecessors | Planned start | Planned finish | Total float | Free float |
| --- | --- | --- | --- | --- | --- | --- | --- | --- | --- | --- |
| 7 | **6. Handover** |  | 5d | 2027-06-15 | 2027-08-17 |  | 2027-03-01 | 2027-03-05 | 0d |  |
| 7.1 | Handover inspection â House 1 | milestone | 0d | 2027-06-15 | 2027-06-15 | 6.4, 6.3 | 2027-03-01 | 2027-03-01 | 22d | 30d |
| 7.2 | Handover inspection â House 2 | milestone | 0d | 2027-06-18 | 2027-06-18 | 6.8, 6.7 | 2027-03-01 | 2027-03-01 | 19d | 27d |
| 7.3 | Handover inspection â House 3 | milestone | 0d | 2027-06-21 | 2027-06-21 | 6.12, 6.11 | 2027-03-01 | 2027-03-01 | 18d | 26d |
| 7.4 | Handover inspection â House 4 | milestone | 0d | 2027-07-07 | 2027-07-07 | 6.16, 6.15 | 2027-03-01 | 2027-03-01 | 6d | 14d |
| 7.5 | Handover inspection â House 5 | milestone | 0d | 2027-07-19 | 2027-07-19 | 6.20, 6.19 | 2027-03-01 | 2027-03-01 | 0d | 6d |
| 7.6 | Handover inspection â House 6 | milestone | 0d | 2027-08-17 | 2027-08-17 | 6.24, 6.23 | 2027-03-01 | 2027-03-01 | 0d |  |
| 7.7 | Contractual project handover | milestone | 0d | 2027-08-17 | 2027-08-17 | 7.1, 7.2, 7.3, 7.4, 7.5, 7.6 | 2027-03-01 | 2027-03-01 | 0d |  |

Notes:
- 7.7: Contractual completion date agreed with the client; the deadline deliberately falls before the earliest achievable date (negative total float).
