# Construction schedule v1.0

Schedule from an IFC model, 2027-05-03 to 2027-07-02.
Refurbishment & Extension of a Family Home

## Schedule

| ID | Activity | Type | Duration | Start | Finish | Predecessors | Planned start | Planned finish | Total float | Free float | Resources |
| --- | --- | --- | --- | --- | --- | --- | --- | --- | --- | --- | --- |
| 1 | Start of refurbishment | milestone | 0d | 2027-05-03 | 2027-05-03 |  |  |  | 2d | 0d |  |
| 2 | **1. Preparation** |  | 5d | 2027-05-03 | 2027-05-13 |  | 2027-05-03 | 2027-05-07 | 0d |  |  |
| 2.1 | Set up site |  | 2d | 2027-05-03 | 2027-05-04 | 1 |  |  | 2d |  |  |
| 2.2 | Demolish existing extension |  | 3d | 2027-05-11 | 2027-05-13 | 2.1 | 2027-05-03 | 2027-05-05 | 0d |  |  |
| 3 | **2. Foundations & structure** |  | 5d | 2027-05-14 | 2027-06-07 |  | 2027-05-03 | 2027-05-07 | 0d |  |  |
| 3.1 | Earthworks for extension |  | 3d | 2027-05-14 | 2027-05-19 | 2.2 | 2027-05-03 | 2027-05-05 | 0d |  |  |
| 3.2 | Extension foundations |  | 4d | 2027-05-20 | 2027-05-25 | 3.1 | 2027-05-03 | 2027-05-06 | 0d |  |  |
| 3.3 | Pour ground floor slab |  | 3d | 2027-05-26 | 2027-05-28 | 3.2 | 2027-05-03 | 2027-05-05 | 0d |  |  |
| 3.4 | Build masonry walls |  | 6d | 2027-05-31 | 2027-06-07 | 3.3 | 2027-05-03 | 2027-05-10 | 0d |  | Masonry crew; Bricklayers |
| 3.5 | Install roof structure |  | 4d | 2027-06-02 | 2027-06-07 | 3.4 SS+2d | 2027-05-03 | 2027-05-06 | 0d |  | Carpenters |
| 4 | **3. Fit-out** |  | 5d | 2027-06-08 | 2027-06-30 |  | 2027-05-03 | 2027-05-07 | 0d |  |  |
| 4.1 | Apply roofing |  | 3d | 2027-06-08 | 2027-06-10 | 3.5 | 2027-05-03 | 2027-05-05 | 0d |  | Carpenters |
| 4.2 | Install window frames |  | 4d | 2027-06-11 | 2027-06-16 | 4.1 | 2027-05-03 | 2027-05-06 | 0d |  | Carpenters |
| 4.3 | Plastering |  | 5d | 2027-06-17 | 2027-06-23 | 4.2 | 2027-05-03 | 2027-05-07 | 0d |  | Plasterers |
| 4.4 | Tiling |  | 4d | 2027-06-24 | 2027-06-29 | 4.3 | 2027-05-03 | 2027-05-06 | 0d |  | Tilers |
| 4.5 | Painting |  | 3d | 2027-06-28 | 2027-06-30 | 4.3, 4.4 FF+1d | 2027-05-03 | 2027-05-05 | 0d |  | Painters |
| 5 | **4. Handover** |  | 5d | 2027-07-01 | 2027-07-02 |  | 2027-05-03 | 2027-05-07 | 0d |  |  |
| 5.1 | Final cleaning |  | 1d | 2027-07-01 | 2027-07-01 | 4.5 | 2027-05-03 | 2027-05-03 | 0d |  |  |
| 5.2 | Handover inspection | milestone | 0d | 2027-07-01 | 2027-07-01 | 5.1 | 2027-05-03 | 2027-05-03 | 0d |  |  |
| 5.3 | Final handover with the occupant |  | 1d | 2027-07-02 | 2027-07-02 | 5.2 | 2027-05-03 | 2027-05-03 | 0d |  |  |

Notes:
- 5.2: Mandatory handover inspection; the deadline has ample margin (no conflict).
